# 1

How a schedule from MS Project changed from version to version. A marks actual dates.

## Version 1 (saved 2024-03-26, file 2.mpp)

Note of the change: Add smth

| ID | Task | Duration | Start | Finish | Total float |
| --- | --- | --- | --- | --- | --- |
| 1 | Начало проекта | 0d | 2024-04-01 | 2024-04-01 | 20d |
| 2 | Установка ПО | 15d | 2024-04-01 | 2024-04-19 | 5d |
| 3 | Обучение персонала | 20d | 2024-04-01 | 2024-04-26 | 0d |
| 4 | Разработка представительских сайтов | 1d | 2024-04-01 | 2024-04-01 | 19d |
| 5 | Разработка сайта 1 | 5d | 2024-04-01 | 2024-04-05 | 15d |
| 6 | Разработка сайта 2 | 5d | 2024-04-01 | 2024-04-05 | 15d |
| 7 | Представительские сайты созданы | 0d | 2024-04-01 | 2024-04-01 | 20d |
| 8 | Разработка корпоративного сайта | 1d | 2024-04-01 | 2024-04-01 | 19d |
| 9 | Проектирование сайта | 5d | 2024-04-01 | 2024-04-05 | 15d |
| 10 | Программирование сайта | 15d | 2024-04-01 | 2024-04-19 | 5d |
| 11 | Наполнение сайта | 3d | 2024-04-01 | 2024-04-03 | 17d |
| 12 | Тестирование сайта | 5d | 2024-04-01 | 2024-04-05 | 15d |
| 13 | Сдача сайта заказчику | 0d | 2024-04-01 | 2024-04-01 | 20d |

## Version 2 (saved 2024-03-26, file 3.mpp)

Note of the change: Add smth

Last finish stays 2024-04-26.

Changed:

| ID | Task | Finish | Duration | Total float |
| --- | --- | --- | --- | --- |
| 4 | **Разработка представительских сайтов** | 2024-04-01 → 2024-04-05 (+4d) | 1d → 5d | 19d → 15d |
| 8 | **Разработка корпоративного сайта** | 2024-04-01 → 2024-04-19 (+18d) | 1d → 15d | 19d → 5d |

## Version 3 (saved 2024-03-26, file 4.mpp)

Note of the change: Add smth

Last finish 2024-04-26 → 2024-06-25 (+60d).

Removed: 3 Обучение персонала; 11 Наполнение сайта

Changed:

| ID | Task | Start | Finish | Duration | Total float | Predecessors |
| --- | --- | --- | --- | --- | --- | --- |
| 2 | Установка ПО | 2024-04-01 → 2024-04-02 (+1d) | 2024-04-19 → 2024-04-22 (+3d) |  | 5d → 0d | none → 1FS+1d |
| 4 | **Разработка представительских сайтов** | 2024-04-01 → 2024-05-20 (+49d) | 2024-04-05 → 2024-05-30 (+55d) | 5d → 8d | 15d → 17d |  |
| 5 | Разработка сайта 1 | 2024-04-01 → 2024-05-20 (+49d) | 2024-04-05 → 2024-05-27 (+52d) |  | 15d → 17d |  |
| 6 | Разработка сайта 2 | 2024-04-01 → 2024-05-23 (+52d) | 2024-04-05 → 2024-05-30 (+55d) |  | 15d → 17d | none → 5FS-2d |
| 7 | Представительские сайты созданы | 2024-04-01 → 2024-05-30 (+59d) | 2024-04-01 → 2024-05-30 (+59d) |  | 20d → 17d | none → 4 |
| 8 | **Разработка корпоративного сайта** | 2024-04-01 → 2024-05-20 (+49d) | 2024-04-19 → 2024-06-25 (+67d) | 15d → 25d | 5d → 0d |  |
| 9 | Проектирование сайта | 2024-04-01 → 2024-05-20 (+49d) | 2024-04-05 → 2024-05-27 (+52d) |  | 15d → 0d |  |
| 10 | Программирование сайта | 2024-04-01 → 2024-05-27 (+56d) | 2024-04-19 → 2024-06-18 (+60d) |  | 5d → 0d | none → 9 |
| 12 | Тестирование сайта | 2024-04-01 → 2024-06-18 (+78d) | 2024-04-05 → 2024-06-25 (+81d) |  | 15d → 0d |  |
| 13 | Сдача сайта заказчику | 2024-04-01 → 2024-06-25 (+85d) | 2024-04-01 → 2024-06-25 (+85d) |  | 20d → 0d | none → 12 |

## Version 4 (saved 2024-03-26, file 5.mpp)

Note of the change: Add smth

Last finish stays 2024-06-25.

Added:

| ID | Task | Duration | Start | Finish | Predecessors |
| --- | --- | --- | --- | --- | --- |
| 3 | Обучение персонала | 20d | 2024-04-16 | 2024-05-20 | 2SS+10d |

Changed:

| ID | Task | Predecessors |
| --- | --- | --- |
| 4 | **Разработка представительских сайтов** | none → 3 |
| 8 | **Разработка корпоративного сайта** | none → 3 |

## Version 5 (saved 2024-03-26, file 6.mpp)

Note of the change: Add smth

Last finish stays 2024-06-25.

Added:

| ID | Task | Duration | Start | Finish | Predecessors | Resources |
| --- | --- | --- | --- | --- | --- | --- |
| 11 | Наполнение сайта | 3d | 2024-06-13 | 2024-06-18 | 10FS-3d | Фомина |

Changed:

| ID | Task | Predecessors | Other |
| --- | --- | --- | --- |
| 2 | Установка ПО |  | resources none → Программное обеспечение; Соколов |
| 3 | Обучение персонала |  | resources none → Преподаватели [400%]; Соломин; Тимофеев; Петров; Кузнецов; Яковлева; Картриджи для принтера; Бумага [0.02 пач] |
| 5 | Разработка сайта 1 |  | resources none → Кузнецов; Тимофеев |
| 6 | Разработка сайта 2 |  | resources none → Кузнецов; Тимофеев |
| 9 | Проектирование сайта |  | resources none → Петров; Соколов |
| 10 | Программирование сайта |  | resources none → Соломин; Яковлева |
| 12 | Тестирование сайта | none → 11 | resources none → Соломин; Яковлева |

## Version 6 (saved 2024-03-26, file 7.mpp)

Note of the change: Add smth

Last finish stays 2024-06-25.

Added:

| ID | Task | Duration | Start | Finish | Predecessors | Resources |
| --- | --- | --- | --- | --- | --- | --- |
| 6 | Разработка дизайна сайта 1 | 2d | 2024-05-20 | 2024-05-22 |  | Кузнецов |
| 7 | Программирование сайта 1 | 3d | 2024-05-22 | 2024-05-27 | 6 | Тимофеев |
| 9 | Разработка дизайна сайта 2 | 2d | 2024-05-23 | 2024-05-27 |  | Кузнецов |
| 10 | Программирование сайта 2 | 3d | 2024-05-27 | 2024-05-30 | 9 | Тимофеев |

Changed:

| ID | Task | Other |
| --- | --- | --- |
| 5 | **Разработка сайта 1** | resources Кузнецов; Тимофеев → none |
| 8 | **Разработка сайта 2** | resources Кузнецов; Тимофеев → none |

## Version 7 (saved 2024-03-26, file 8.mpp)

Note of the change: Add smth

Last finish 2024-06-25 → 2024-07-03 (+8d).

Changed:

| ID | Task | Start | Finish | Duration | Other |
| --- | --- | --- | --- | --- | --- |
| 2 | Установка ПО |  | 2024-04-22 → 2024-05-13 (+21d) | 15d → 25d |  |
| 3 | Обучение персонала |  | 2024-05-20 → 2024-05-27 (+7d) | 20d → 25.83d | resources Преподаватели [400%]; Соломин; Тимофеев; Петров; Кузнецов; Яковлева; Картриджи для принтера; Бумага [0.02 пач] → Преподаватели [300%]; Соломин; Тимофеев; Петров; Кузнецов; Яковлева; Картриджи для принтера; Бумага [0.02 пач]; Соколов |
| 4 | **Разработка представительских сайтов** | 2024-05-20 → 2024-05-27 (+7d) | 2024-05-30 → 2024-06-06 (+7d) |  |  |
| 5 | **Разработка сайта 1** | 2024-05-20 → 2024-05-27 (+7d) | 2024-05-27 → 2024-06-03 (+7d) |  |  |
| 6 | Разработка дизайна сайта 1 | 2024-05-20 → 2024-05-27 (+7d) | 2024-05-22 → 2024-05-29 (+7d) |  |  |
| 7 | Программирование сайта 1 | 2024-05-22 → 2024-05-29 (+7d) | 2024-05-27 → 2024-06-03 (+7d) |  |  |
| 8 | **Разработка сайта 2** | 2024-05-23 → 2024-05-30 (+7d) | 2024-05-30 → 2024-06-06 (+7d) |  |  |
| 9 | Разработка дизайна сайта 2 | 2024-05-23 → 2024-05-30 (+7d) | 2024-05-27 → 2024-06-03 (+7d) |  |  |
| 10 | Программирование сайта 2 | 2024-05-27 → 2024-06-03 (+7d) | 2024-05-30 → 2024-06-06 (+7d) |  |  |
| 11 | Представительские сайты созданы | 2024-05-30 → 2024-06-06 (+7d) | 2024-05-30 → 2024-06-06 (+7d) |  |  |
| 12 | **Разработка корпоративного сайта** | 2024-05-20 → 2024-05-27 (+7d) | 2024-06-25 → 2024-07-03 (+8d) |  |  |
| 13 | Проектирование сайта | 2024-05-20 → 2024-05-27 (+7d) | 2024-05-27 → 2024-06-03 (+7d) |  |  |
| 14 | Программирование сайта | 2024-05-27 → 2024-06-03 (+7d) | 2024-06-18 → 2024-06-26 (+8d) |  |  |
| 15 | Наполнение сайта | 2024-06-13 → 2024-06-21 (+8d) | 2024-06-18 → 2024-06-26 (+8d) |  |  |
| 16 | Тестирование сайта | 2024-06-18 → 2024-06-26 (+8d) | 2024-06-25 → 2024-07-03 (+8d) |  |  |
| 17 | Сдача сайта заказчику | 2024-06-25 → 2024-07-03 (+8d) | 2024-06-25 → 2024-07-03 (+8d) |  |  |

## Version 8 (saved 2024-03-26, file 9.mpp)

Note of the change: Add smth

Last finish 2024-07-03 → 2024-05-27 (-37d).

Changed:

| ID | Task | Start | Finish | Duration | Total float | Predecessors | Other |
| --- | --- | --- | --- | --- | --- | --- | --- |
| 1 | Начало проекта |  |  |  |  |  | baseline start none → 2024-04-01; baseline finish none → 2024-04-01 |
| 2 | Установка ПО |  | 2024-05-13 → 2024-04-08 (-35d) | 25d → 4.17d |  |  | resources Программное обеспечение; Соколов → Программное обеспечение; Соколов; Тимофеев; Яковлева; Соломин; baseline start none → 2024-04-02; baseline finish none → 2024-04-08 |
| 3 | Обучение персонала | 2024-04-16 → 2024-04-08 (-8d) | 2024-05-27 → 2024-05-02 (-25d) | 25.83d → 16.79d |  | 2SS+10d → 2 | constraint none → start no earlier than 2024-04-08; baseline start none → 2024-04-08; baseline finish none → 2024-05-02 |
| 4 | **Разработка представительских сайтов** | 2024-05-27 → 2024-05-03 (-24d) | 2024-06-06 → 2024-05-17 (-20d) |  | 17d → 6.5d |  | baseline start none → 2024-05-03; baseline finish none → 2024-05-17 |
| 5 | **Разработка сайта 1** | 2024-05-27 → 2024-05-03 (-24d) | 2024-06-03 → 2024-05-14 (-20d) |  | 17d → 6.5d |  | baseline start none → 2024-05-03; baseline finish none → 2024-05-14 |
| 6 | Разработка дизайна сайта 1 | 2024-05-27 → 2024-05-03 (-24d) | 2024-05-29 → 2024-05-06 (-23d) |  | 17d → 6.5d |  | baseline start none → 2024-05-03; baseline finish none → 2024-05-06 |
| 7 | Программирование сайта 1 | 2024-05-29 → 2024-05-07 (-22d) | 2024-06-03 → 2024-05-14 (-20d) |  | 17d → 6.5d |  | baseline start none → 2024-05-07; baseline finish none → 2024-05-14 |
| 8 | **Разработка сайта 2** | 2024-05-30 → 2024-05-08 (-22d) | 2024-06-06 → 2024-05-17 (-20d) |  | 17d → 6.5d |  | baseline start none → 2024-05-08; baseline finish none → 2024-05-17 |
| 9 | Разработка дизайна сайта 2 | 2024-05-30 → 2024-05-08 (-22d) | 2024-06-03 → 2024-05-14 (-20d) |  | 17d → 6.5d |  | baseline start none → 2024-05-08; baseline finish none → 2024-05-14 |
| 10 | Программирование сайта 2 | 2024-06-03 → 2024-05-14 (-20d) | 2024-06-06 → 2024-05-17 (-20d) |  | 17d → 6.5d |  | baseline start none → 2024-05-14; baseline finish none → 2024-05-17 |
| 11 | Представительские сайты созданы | 2024-06-06 → 2024-05-17 (-20d) | 2024-06-06 → 2024-05-17 (-20d) |  | 17d → 6.5d |  | baseline start none → 2024-05-17; baseline finish none → 2024-05-17 |
| 12 | **Разработка корпоративного сайта** | 2024-05-27 → 2024-05-03 (-24d) | 2024-07-03 → 2024-05-27 (-37d) | 25d → 14.5d |  |  | baseline start none → 2024-05-03; baseline finish none → 2024-05-27 |
| 13 | Проектирование сайта | 2024-05-27 → 2024-05-03 (-24d) | 2024-06-03 → 2024-05-14 (-20d) |  |  |  | baseline start none → 2024-05-03; baseline finish none → 2024-05-14 |
| 14 | Программирование сайта | 2024-06-03 → 2024-05-14 (-20d) | 2024-06-26 → 2024-05-23 (-34d) | 15d → 7.5d |  |  | resources Соломин; Яковлева → Соломин; Яковлева; Соколов; Петров; baseline start none → 2024-05-14; baseline finish none → 2024-05-23 |
| 15 | Наполнение сайта | 2024-06-21 → 2024-05-20 (-32d) | 2024-06-26 → 2024-05-23 (-34d) |  |  |  | baseline start none → 2024-05-20; baseline finish none → 2024-05-23 |
| 16 | Тестирование сайта | 2024-06-26 → 2024-05-23 (-34d) | 2024-07-03 → 2024-05-27 (-37d) | 5d → 2d |  |  | resources Соломин; Яковлева → Соломин; Яковлева; Петров; Соколов; Тимофеев; baseline start none → 2024-05-23; baseline finish none → 2024-05-27 |
| 17 | Сдача сайта заказчику | 2024-07-03 → 2024-05-27 (-37d) | 2024-07-03 → 2024-05-27 (-37d) |  |  |  | baseline start none → 2024-05-27; baseline finish none → 2024-05-27 |

## Version 9 (data date 2024-05-01, saved 2024-03-26, file 10.mpp)

Note of the change: Add smth

Last finish 2024-05-27 → 2024-05-23 (-4d). Complete tasks 0 → 2.

Changed:

| ID | Task | Start | Finish | Duration | Complete | Total float |
| --- | --- | --- | --- | --- | --- | --- |
| 1 | Начало проекта | 2024-04-01 A | 2024-04-01 A |  | 0% → 100% | 0d → none |
| 2 | Установка ПО | 2024-04-02 A | 2024-04-08 A |  | 0% → 100% | 0d → none |
| 3 | Обучение персонала | 2024-04-08 A |  |  | 0% → 70% | 0d → -7d |
| 4 | **Разработка представительских сайтов** | 2024-05-03 → 2024-04-24 A (-9d) | 2024-05-17 → 2024-05-16 (-1d) | 8d → 12.6d | 0% → 4% | 6.5d → 4.4d |
| 5 | **Разработка сайта 1** | 2024-05-03 → 2024-04-24 A (-9d) | 2024-05-14 → 2024-05-13 (-1d) | 5d → 9.6d | 0% → 8% | 6.5d → 4.4d |
| 6 | Разработка дизайна сайта 1 | 2024-05-03 → 2024-04-24 A (-9d) |  |  | 0% → 20% | 6.5d → 4.4d |
| 7 | Программирование сайта 1 | 2024-05-07 → 2024-05-06 (-1d) | 2024-05-14 → 2024-05-13 (-1d) |  |  | 6.5d → 4.4d |
| 8 | **Разработка сайта 2** | 2024-05-08 → 2024-05-07 (-1d) | 2024-05-17 → 2024-05-16 (-1d) |  |  | 6.5d → 4.4d |
| 9 | Разработка дизайна сайта 2 | 2024-05-08 → 2024-05-07 (-1d) | 2024-05-14 → 2024-05-13 (-1d) |  |  | 6.5d → 4.4d |
| 10 | Программирование сайта 2 | 2024-05-14 → 2024-05-13 (-1d) | 2024-05-17 → 2024-05-16 (-1d) |  |  | 6.5d → 4.4d |
| 11 | Представительские сайты созданы | 2024-05-17 → 2024-05-16 (-1d) | 2024-05-17 → 2024-05-16 (-1d) |  |  | 6.5d → 4.4d |
| 12 | **Разработка корпоративного сайта** | 2024-05-03 → 2024-04-22 A (-11d) | 2024-05-27 → 2024-05-23 (-4d) | 14.5d → 19d | 0% → 14% |  |
| 13 | Проектирование сайта | 2024-05-03 → 2024-04-22 A (-11d) | 2024-05-14 → 2024-05-07 (-7d) |  | 0% → 50% |  |
| 14 | Программирование сайта | 2024-05-14 → 2024-05-07 (-7d) | 2024-05-23 → 2024-05-21 (-2d) |  |  |  |
| 15 | Наполнение сайта | 2024-05-20 → 2024-05-16 (-4d) | 2024-05-23 → 2024-05-21 (-2d) |  |  |  |
| 16 | Тестирование сайта | 2024-05-23 → 2024-05-21 (-2d) | 2024-05-27 → 2024-05-23 (-4d) |  |  |  |
| 17 | Сдача сайта заказчику | 2024-05-27 → 2024-05-23 (-4d) | 2024-05-27 → 2024-05-23 (-4d) |  |  |  |
